# Lịch xuất bản sách thiếu nhi

How a schedule from MS Project changed from version to version. A marks actual dates.

## Version 1 (saved 2025-09-22, file Advanced Tracking A_Start.mpp)

Note of the change: QLDA buoi5

| ID | WBS | Task | Duration | Start | Finish | Predecessors | Total float | Constraint |
| --- | --- | --- | --- | --- | --- | --- | --- | --- |
| 1 | 1 | **Họp ban biên tập** | 60.12d | 2015-04-13 08:00 | 2015-07-06 09:00 |  | 103.75d |  |
| 2 |  | Họp ban biên tập 1 | 1h | 2015-04-13 08:00 | 2015-04-13 09:00 |  | 163.75d | start no earlier than 2015-04-13 08:00 |
| 3 |  | Họp ban biên tập 2 | 1h | 2015-04-20 08:00 | 2015-04-20 09:00 |  | 158.75d | start no earlier than 2015-04-20 08:00 |
| 4 |  | Họp ban biên tập 3 | 1h | 2015-04-27 08:00 | 2015-04-27 09:00 |  | 153.75d | start no earlier than 2015-04-27 08:00 |
| 5 |  | Họp ban biên tập 4 | 1h | 2015-05-04 08:00 | 2015-05-04 09:00 |  | 148.75d | start no earlier than 2015-05-04 08:00 |
| 6 |  | Họp ban biên tập 5 | 1h | 2015-05-11 08:00 | 2015-05-11 09:00 |  | 143.75d | start no earlier than 2015-05-11 08:00 |
| 7 |  | Họp ban biên tập 6 | 1h | 2015-05-18 08:00 | 2015-05-18 09:00 |  | 138.75d | start no earlier than 2015-05-18 08:00 |
| 8 |  | Họp ban biên tập 7 | 1h | 2015-05-25 08:00 | 2015-05-25 09:00 |  | 133.75d | start no earlier than 2015-05-25 08:00 |
| 9 |  | Họp ban biên tập 8 | 1h | 2015-06-01 08:00 | 2015-06-01 09:00 |  | 128.75d | start no earlier than 2015-06-01 08:00 |
| 10 |  | Họp ban biên tập 9 | 1h | 2015-06-08 08:00 | 2015-06-08 09:00 |  | 123.75d | start no earlier than 2015-06-08 08:00 |
| 11 |  | Họp ban biên tập 10 | 1h | 2015-06-15 08:00 | 2015-06-15 09:00 |  | 118.75d | start no earlier than 2015-06-15 08:00 |
| 12 |  | Họp ban biên tập 11 | 1h | 2015-06-22 08:00 | 2015-06-22 09:00 |  | 113.75d | start no earlier than 2015-06-22 08:00 |
| 13 |  | Họp ban biên tập 12 | 1h | 2015-06-29 08:00 | 2015-06-29 09:00 |  | 108.75d | start no earlier than 2015-06-29 08:00 |
| 14 |  | Họp ban biên tập 13 | 1h | 2015-07-06 08:00 | 2015-07-06 09:00 |  | 103.75d | start no earlier than 2015-07-06 08:00 |
| 15 | 2 | **Tiếp nhận bản thảo** | 35.5d | 2015-04-06 08:00 | 2015-05-25 12:00 |  | 0d |  |
| 16 |  | Bản thảo đã được nhận | 0d | 2015-04-06 08:00 | 2015-04-06 08:00 |  | 0d |  |
| 17 |  | Biên tập nội dung | 15d | 2015-04-06 08:00 | 2015-04-30 10:00 | 16 | 0d |  |
| 18 |  | Duyệt tranh minh họa gốc | 10.25d | 2015-04-23 10:00 | 2015-05-07 12:00 | 17FS-5d | 0d |  |
| 19 |  | Tác giả duyệt phần biên tập nội dung | 12d | 2015-05-07 13:00 | 2015-05-25 12:00 | 17, 18 | 0d |  |
| 20 |  | Bàn giao cho Ban biên tập | 0d | 2015-05-25 12:00 | 2015-05-25 12:00 | 19 | 0d |  |
| 21 | 3 | **Biên tập** | 29.12d | 2015-05-25 13:00 | 2015-07-03 14:00 | 15 | 0d |  |
| 22 |  | Sắp xếp bản thảo để biên tập ngôn ngữ | 5.12d | 2015-05-25 13:00 | 2015-06-01 14:00 |  | 0d |  |
| 23 |  | Biên tập ngôn ngữ (Copyedit) | 11.25d | 2015-06-01 14:00 | 2015-06-16 16:00 | 22 | 0d |  |
| 24 |  | Tác giả duyệt bản biên tập ngôn ngữ | 10d | 2015-06-16 16:00 | 2015-06-30 16:00 | 23 | 0d |  |
| 25 |  | Tích hợp chỉnh sửa từ biên tập ngôn ngữ | 5.12d | 2015-06-26 11:00 | 2015-07-03 14:00 | 24FS-2.5% | 0d |  |
| 26 |  | Bàn giao cho bộ phận Sản xuất | 0d | 2015-07-03 14:00 | 2015-07-03 14:00 | 25 | 0d |  |
| 27 | 4 | **Thiết kế và sản xuất** | 58.25d | 2015-07-03 14:00 | 2015-09-23 16:00 | 21 | 0d |  |
| 28 |  | Dàn trang | 15d | 2015-07-03 14:00 | 2015-07-24 14:00 |  | 0d |  |
| 29 |  | Thiết kế minh họa bên trong | 15.25d | 2015-07-03 14:00 | 2015-07-24 16:00 | 28SS | 0d |  |
| 30 | 4.3 | **Duyệt bản in thử lần 1** | 30d | 2015-07-24 16:00 | 2015-09-04 16:00 | 29 | 0d |  |
| 31 |  | Soát lỗi và lập chỉ mục | 10d | 2015-07-24 16:00 | 2015-08-07 16:00 |  | 0d | start no earlier than 2015-07-17 08:00 |
| 32 |  | Tích hợp góp ý từ bản in thử lần 1 | 10d | 2015-08-07 16:00 | 2015-08-21 16:00 | 31 | 0d |  |
| 33 |  | Gửi các trang đã soát lỗi cho bộ phận Sản xuất | 0d | 2015-08-21 16:00 | 2015-08-21 16:00 | 32 | 0d |  |
| 34 |  | Nhập chỉnh sửa trang và chỉ mục | 5d | 2015-08-21 16:00 | 2015-08-28 16:00 | 33 | 0d |  |
| 35 |  | Thiết kế bìa | 5d | 2015-08-28 16:00 | 2015-09-04 16:00 | 34 | 0d |  |
| 36 | 4.4 | **Duyệt bản in thử lần 2** | 13d | 2015-09-04 16:00 | 2015-09-23 16:00 |  | 0d |  |
| 37 |  | In thử và duyệt | 6.5d | 2015-09-04 16:00 | 2015-09-15 11:00 | 35 | 0d |  |
| 38 |  | Gửi các trang đã soát lỗi cho bộ phận Sản xuất | 0d | 2015-09-15 11:00 | 2015-09-15 11:00 | 37 | 0d |  |
| 39 |  | Duyệt cuối cùng | 5d | 2015-09-16 16:00 | 2015-09-23 16:00 | 38 | 0d |  |
| 40 | 4.5 | **Thiết kế website đi kèm cuốn sách** | 10d | 2015-09-04 16:00 | 2015-09-18 16:00 | 30 | 3d |  |
| 41 |  | Tạo bản mẫu (mockup) | 4.5d | 2015-09-04 16:00 | 2015-09-16 16:00 |  | 3d |  |
| 42 |  | Duyệt cùng tác giả | 2d | 2015-09-16 16:00 | 2015-09-18 16:00 | 41 | 3d |  |
| 43 | 5 | **Chuẩn bị màu và in ấn** | 46d | 2015-09-23 16:00 | 2015-11-26 16:00 | 40 | 0d |  |
| 44 |  | Gửi đến xưởng xử lý màu | 1d | 2015-09-23 16:00 | 2015-09-28 16:00 | 36 | 0d |  |
| 45 |  | Tạo bản in thử | 10d | 2015-09-28 16:00 | 2015-10-12 16:00 | 44 | 0d |  |
| 46 |  | In và vận chuyển | 30d | 2015-10-15 16:00 | 2015-11-26 16:00 | 45FS+3d | 0d |  |
| 47 | 6 | **Chuẩn bị ra mắt sách** | 22d | 2015-09-28 16:00 | 2015-10-28 16:00 |  | 21d |  |
| 48 |  | Lập kế hoạch ra mắt | 5d | 2015-09-28 16:00 | 2015-10-05 16:00 | 44 | 21d |  |
| 49 |  | Phân công thành viên nhóm ra mắt | 1d | 2015-10-05 16:00 | 2015-10-06 16:00 | 48 | 21d |  |
| 50 |  | Hoàn thành bảng câu hỏi cho tác giả | 5d | 2015-10-06 16:00 | 2015-10-13 16:00 | 49 | 21d |  |
| 51 |  | Lên lịch phỏng vấn tác giả | 1d | 2015-10-13 16:00 | 2015-10-14 16:00 | 50 | 21d |  |
| 52 |  | Thiết kế và đặt in tài liệu marketing | 10d | 2015-10-14 16:00 | 2015-10-28 16:00 | 51 | 21d |  |

## Version 2 (saved 2025-09-27, file Advanced Tracking B_Start.mpp)

Note of the change: QLDA buoi5

Last finish stays 2015-11-26. Complete tasks 0 → 4.

Changed:

| ID | Task | Start | Finish | Duration | Complete | Total float | Other |
| --- | --- | --- | --- | --- | --- | --- | --- |
| 1 | **Họp ban biên tập** | 2015-04-13 08:00 A |  |  | 0% → 15% | 103.75d → 103.88d |  |
| 2 | Họp ban biên tập 1 | 2015-04-13 08:00 A | 2015-04-13 09:00 A |  | 0% → 100% | 163.75d → none | resources Carole Poland; Jun Cao; Hany Morcos; Dan Jump [50%] → Cẩm Lan; Tuấn Cao; Hạnh Mơ; Đan Dũng [50%] |
| 3 | Họp ban biên tập 2 | 2015-04-20 08:00 A | 2015-04-20 09:00 A |  | 0% → 100% | 158.75d → none | resources Carole Poland; Jun Cao; Hany Morcos; Dan Jump [50%] → Cẩm Lan; Tuấn Cao; Hạnh Mơ; Đan Dũng [50%] |
| 4 | Họp ban biên tập 3 |  |  |  |  | 153.75d → 153.88d | resources Carole Poland; Jun Cao; Hany Morcos; Dan Jump [50%] → Cẩm Lan; Tuấn Cao; Hạnh Mơ; Đan Dũng [50%] |
| 5 | Họp ban biên tập 4 |  |  |  |  | 148.75d → 148.88d | resources Carole Poland; Jun Cao; Hany Morcos; Dan Jump [50%] → Cẩm Lan; Tuấn Cao; Hạnh Mơ; Đan Dũng [50%] |
| 6 | Họp ban biên tập 5 |  |  |  |  | 143.75d → 143.88d | resources Carole Poland; Jun Cao; Hany Morcos; Dan Jump [50%] → Cẩm Lan; Tuấn Cao; Hạnh Mơ; Đan Dũng [50%] |
| 7 | Họp ban biên tập 6 |  |  |  |  | 138.75d → 138.88d | resources Carole Poland; Jun Cao; Hany Morcos; Dan Jump [50%] → Cẩm Lan; Tuấn Cao; Hạnh Mơ; Đan Dũng [50%] |
| 8 | Họp ban biên tập 7 |  |  |  |  | 133.75d → 133.88d | resources Carole Poland; Jun Cao; Hany Morcos; Dan Jump [50%] → Cẩm Lan; Tuấn Cao; Hạnh Mơ; Đan Dũng [50%] |
| 9 | Họp ban biên tập 8 |  |  |  |  | 128.75d → 128.88d | resources Carole Poland; Jun Cao; Hany Morcos; Dan Jump [50%] → Cẩm Lan; Tuấn Cao; Hạnh Mơ; Đan Dũng [50%] |
| 10 | Họp ban biên tập 9 |  |  |  |  | 123.75d → 123.88d | resources Carole Poland; Jun Cao; Hany Morcos; Dan Jump [50%] → Cẩm Lan; Tuấn Cao; Hạnh Mơ; Đan Dũng [50%] |
| 11 | Họp ban biên tập 10 |  |  |  |  | 118.75d → 118.88d | resources Carole Poland; Jun Cao; Hany Morcos; Dan Jump [50%] → Cẩm Lan; Tuấn Cao; Hạnh Mơ; Đan Dũng [50%] |
| 12 | Họp ban biên tập 11 |  |  |  |  | 113.75d → 113.88d | resources Carole Poland; Jun Cao; Hany Morcos; Dan Jump [50%] → Cẩm Lan; Tuấn Cao; Hạnh Mơ; Đan Dũng [50%] |
| 13 | Họp ban biên tập 12 |  |  |  |  | 108.75d → 108.88d | resources Carole Poland; Jun Cao; Hany Morcos; Dan Jump [50%] → Cẩm Lan; Tuấn Cao; Hạnh Mơ; Đan Dũng [50%] |
| 14 | Họp ban biên tập 13 |  |  |  |  | 103.75d → 103.88d | resources Carole Poland; Jun Cao; Hany Morcos; Dan Jump [50%] → Cẩm Lan; Tuấn Cao; Hạnh Mơ; Đan Dũng [50%] |
| 15 | **Tiếp nhận bản thảo** | 2015-04-06 08:00 A | 2015-05-25 12:00 → 2015-05-26 15:00 (+1d) | 35.5d → 36.75d | 0% → 54% | 0d → 2.38d |  |
| 16 | Bản thảo đã được nhận | 2015-04-06 08:00 A | 2015-04-06 08:00 A |  | 0% → 100% | 0d → none |  |
| 17 | Biên tập nội dung | 2015-04-06 08:00 A | 2015-04-30 10:00 A |  | 0% → 100% | 0d → none | resources Carole Poland → Cẩm Lan |
| 18 | Duyệt tranh minh họa gốc | 2015-04-23 10:00 A | 2015-05-07 12:00 → 2015-05-08 15:00 (+1d) | 10.25d → 11.5d | 0% → 50% | 0d → 2.38d | resources Hany Morcos; Jane Dow → Hạnh Mơ; Ngọc Đào |
| 19 | Tác giả duyệt phần biên tập nội dung | 2015-05-07 13:00 → 2015-05-08 15:00 (+1d) | 2015-05-25 12:00 → 2015-05-26 15:00 (+1d) |  |  | 0d → 2.38d | resources Tad Orman; Copyeditors → Thái Đạt; Biên tập viên ngôn ngữ |
| 20 | Bàn giao cho Ban biên tập | 2015-05-25 12:00 → 2015-05-26 15:00 (+1d) | 2015-05-25 12:00 → 2015-05-26 15:00 (+1d) |  |  | 0d → 2.38d | resources Carole Poland → Cẩm Lan |
| 21 | **Biên tập** | 2015-05-25 13:00 → 2015-05-26 15:00 (+1d) | 2015-07-03 14:00 → 2015-07-06 16:00 (+3d) |  |  | 0d → 2.38d |  |
| 22 | Sắp xếp bản thảo để biên tập ngôn ngữ | 2015-05-25 13:00 → 2015-05-26 15:00 (+1d) | 2015-06-01 14:00 → 2015-06-02 16:00 (+1d) |  |  | 0d → 2.38d | resources Hany Morcos; Dan Jump [50%] → Hạnh Mơ; Đan Dũng [50%] |
| 23 | Biên tập ngôn ngữ (Copyedit) | 2015-06-01 14:00 → 2015-06-02 16:00 (+1d) | 2015-06-16 16:00 → 2015-06-18 09:00 (+2d) |  |  | 0d → 2.38d | resources Copyeditors [200%] → Biên tập viên ngôn ngữ [200%] |
| 24 | Tác giả duyệt bản biên tập ngôn ngữ | 2015-06-16 16:00 → 2015-06-18 09:00 (+2d) | 2015-06-30 16:00 → 2015-07-02 09:00 (+2d) |  |  | 0d → 2.38d | resources Tad Orman; Copyeditors [25%] → Thái Đạt; Biên tập viên ngôn ngữ [25%] |
| 25 | Tích hợp chỉnh sửa từ biên tập ngôn ngữ | 2015-06-26 11:00 → 2015-06-29 14:00 (+3d) | 2015-07-03 14:00 → 2015-07-06 16:00 (+3d) |  |  | 0d → 2.38d | resources Carole Poland; Dan Jump [50%] → Cẩm Lan; Đan Dũng [50%] |
| 26 | Bàn giao cho bộ phận Sản xuất | 2015-07-03 14:00 → 2015-07-06 16:00 (+3d) | 2015-07-03 14:00 → 2015-07-06 16:00 (+3d) |  |  | 0d → 2.38d | resources Hany Morcos → Hạnh Mơ |
| 27 | **Thiết kế và sản xuất** | 2015-07-03 14:00 → 2015-07-06 16:00 (+3d) | 2015-09-23 16:00 → 2015-09-24 17:00 (+1d) | 58.25d → 58.12d |  | 0d → 1d |  |
| 28 | Dàn trang | 2015-07-03 14:00 → 2015-07-06 16:00 (+3d) | 2015-07-24 14:00 → 2015-07-27 16:00 (+3d) |  |  | 0d → 2.38d | resources Jane Dow → Ngọc Đào |
| 29 | Thiết kế minh họa bên trong | 2015-07-03 14:00 → 2015-07-06 16:00 (+3d) | 2015-07-24 16:00 → 2015-07-28 09:00 (+4d) |  |  | 0d → 2.38d | resources Luis Sousa; Hany Morcos → Lưu Tùng; Hạnh Mơ |
| 30 | **Duyệt bản in thử lần 1** | 2015-07-24 16:00 → 2015-07-28 09:00 (+4d) | 2015-09-04 16:00 → 2015-09-08 09:00 (+4d) |  |  | 0d → 2.38d |  |
| 31 | Soát lỗi và lập chỉ mục | 2015-07-24 16:00 → 2015-07-28 09:00 (+4d) | 2015-08-07 16:00 → 2015-08-11 09:00 (+4d) |  |  | 0d → 2.38d | resources Tad Orman; Copyeditors → Thái Đạt; Biên tập viên ngôn ngữ |
| 32 | Tích hợp góp ý từ bản in thử lần 1 | 2015-08-07 16:00 → 2015-08-11 09:00 (+4d) | 2015-08-21 16:00 → 2015-08-25 09:00 (+4d) |  |  | 0d → 2.38d | resources Hany Morcos; Dan Jump [50%] → Hạnh Mơ; Đan Dũng [50%] |
| 33 | Gửi các trang đã soát lỗi cho bộ phận Sản xuất | 2015-08-21 16:00 → 2015-08-25 09:00 (+4d) | 2015-08-21 16:00 → 2015-08-25 09:00 (+4d) |  |  | 0d → 2.38d | resources Hany Morcos → Hạnh Mơ |
| 34 | Nhập chỉnh sửa trang và chỉ mục | 2015-08-21 16:00 → 2015-08-25 09:00 (+4d) | 2015-08-28 16:00 → 2015-09-01 09:00 (+4d) |  |  | 0d → 2.38d | resources Jane Dow; Dan Jump [50%] → Ngọc Đào; Đan Dũng [50%] |
| 35 | Thiết kế bìa | 2015-08-28 16:00 → 2015-09-01 09:00 (+4d) | 2015-09-04 16:00 → 2015-09-08 09:00 (+4d) |  |  | 0d → 2.38d | resources Luis Sousa → Lưu Tùng |
| 36 | **Duyệt bản in thử lần 2** | 2015-09-04 16:00 → 2015-09-08 09:00 (+4d) | 2015-09-23 16:00 → 2015-09-24 17:00 (+1d) | 13d → 12.88d |  | 0d → 1d |  |
| 37 | In thử và duyệt | 2015-09-04 16:00 → 2015-09-08 09:00 (+4d) | 2015-09-15 11:00 → 2015-09-16 14:00 (+1d) |  |  | 0d → 2.38d | resources Hany Morcos → Hạnh Mơ |
| 38 | Gửi các trang đã soát lỗi cho bộ phận Sản xuất | 2015-09-15 11:00 → 2015-09-16 14:00 (+1d) | 2015-09-15 11:00 → 2015-09-16 14:00 (+1d) |  |  | 0d → 2.38d | resources Hany Morcos → Hạnh Mơ |
| 39 | Duyệt cuối cùng | 2015-09-16 16:00 → 2015-09-18 08:00 (+2d) | 2015-09-23 16:00 → 2015-09-24 17:00 (+1d) |  |  | 0d → 1d | resources Jane Dow; Hany Morcos [50%]; Carole Poland [50%]; Bound galley proofs [20 copies] → Ngọc Đào; Hạnh Mơ [50%]; Cẩm Lan [50%]; Bản in thử đóng gáy [20 copies] |
| 40 | **Thiết kế website đi kèm cuốn sách** | 2015-09-04 16:00 → 2015-09-08 09:00 (+4d) | 2015-09-18 16:00 → 2015-09-22 09:00 (+4d) |  |  | 3d → 3.88d |  |
| 41 | Tạo bản mẫu (mockup) | 2015-09-04 16:00 → 2015-09-08 09:00 (+4d) | 2015-09-16 16:00 → 2015-09-18 09:00 (+2d) |  |  | 3d → 3.88d | resources Luis Sousa; Hany Morcos → Lưu Tùng; Hạnh Mơ |
| 42 | Duyệt cùng tác giả | 2015-09-16 16:00 → 2015-09-18 09:00 (+2d) | 2015-09-18 16:00 → 2015-09-22 09:00 (+4d) |  |  | 3d → 3.88d | resources Luis Sousa; Tad Orman; Travel [0.1%]; Dan Jump [50%] → Lưu Tùng; Thái Đạt; Đi lại [0.1%]; Đan Dũng [50%] |
| 43 | **Chuẩn bị màu và in ấn** | 2015-09-23 16:00 → 2015-09-28 08:00 (+5d) | 2015-11-26 16:00 → 2015-11-26 17:00 | 46d → 44d |  |  |  |
| 44 | Gửi đến xưởng xử lý màu | 2015-09-23 16:00 → 2015-09-28 08:00 (+5d) | 2015-09-28 16:00 → 2015-09-28 17:00 |  |  |  | resources Hany Morcos → Hạnh Mơ |
| 45 | Tạo bản in thử | 2015-09-28 16:00 → 2015-09-29 08:00 (+1d) | 2015-10-12 16:00 → 2015-10-12 17:00 |  |  |  | resources Color Setting Services → Dịch vụ thiết lập màu in |
| 46 | In và vận chuyển | 2015-10-15 16:00 → 2015-10-16 08:00 (+1d) | 2015-11-26 16:00 → 2015-11-26 17:00 |  |  |  | resources Printing Service → Dịch vụ in ấn |
| 47 | **Chuẩn bị ra mắt sách** | 2015-09-28 16:00 → 2015-09-29 08:00 (+1d) | 2015-10-28 16:00 → 2015-10-28 17:00 |  |  |  |  |
| 48 | Lập kế hoạch ra mắt | 2015-09-28 16:00 → 2015-09-29 08:00 (+1d) | 2015-10-05 16:00 → 2015-10-05 17:00 |  |  |  | resources Carole Poland [50%]; Jane Dow → Cẩm Lan [50%]; Ngọc Đào |
| 49 | Phân công thành viên nhóm ra mắt | 2015-10-05 16:00 → 2015-10-06 08:00 (+1d) | 2015-10-06 16:00 → 2015-10-06 17:00 |  |  |  | resources Carole Poland → Cẩm Lan |
| 50 | Hoàn thành bảng câu hỏi cho tác giả | 2015-10-06 16:00 → 2015-10-07 08:00 (+1d) | 2015-10-13 16:00 → 2015-10-13 17:00 |  |  |  | resources Hany Morcos; Tad Orman; Travel [0.1%] → Hạnh Mơ; Thái Đạt; Đi lại [0.1%] |
| 51 | Lên lịch phỏng vấn tác giả | 2015-10-13 16:00 → 2015-10-14 08:00 (+1d) | 2015-10-14 16:00 → 2015-10-14 17:00 |  |  |  | resources Hany Morcos → Hạnh Mơ |
| 52 | Thiết kế và đặt in tài liệu marketing | 2015-10-14 16:00 → 2015-10-15 08:00 (+1d) | 2015-10-28 16:00 → 2015-10-28 17:00 |  |  |  | resources Hany Morcos → Hạnh Mơ |
